# Plan trabajo SIT V2

Schedule from MS Project, 2017-09-25 to 2018-01-18, A marks actual dates.
SFP

## Calendars

- Estándar: Mon-Fri 09:00-13:00, 15:00-19:00; Sat-Sun off. Exceptions (off unless hours are given): 2017-10-03.

## Resources

| Resource |
| --- |
| R2 |
| R" |
| R! |
| R1 |

## Schedule

| ID | WBS | Task | Type | Duration | Start | Finish | Predecessors | Complete | Remaining | Total slack | Free slack | Constraint | Resources | Work | Actual work | Text1 |
| --- | --- | --- | --- | --- | --- | --- | --- | --- | --- | --- | --- | --- | --- | --- | --- | --- |
| 1 | 1 | **Sistema de Transparencia** |  | 82.5d | 2017-09-25 A | 2018-01-18 |  | 2% | 80.92d | 0d |  |  |  | 1038h | 16h |  |
| 2 | 1.1 | **Requerimiento 1** |  | 43.25d | 2017-09-25 A | 2017-11-24 |  | 8% | 39.76d | 31.25d |  |  |  | 244h | 16h |  |
| 3 | 1.1.1 | **Módulo de Información** |  | 0.25d | 2017-10-09 | 2017-10-09 |  |  |  | 0d |  |  |  | 2h |  |  |
| 4 | 1.1.1.1 | Actualizar plazos en días hábiles para atender solicitudes |  | 2h | 2017-10-09 | 2017-10-09 |  |  |  | 0d |  | start no earlier than 2017-10-09 | R2 | 2h |  | R1-Sec. 3.1 |
| 5 | 1.1.2 | **Módulo de Solicitudes** |  | 13d | 2017-09-25 A | 2017-10-12 |  | 17% | 10.83d | 0d |  |  |  | 32h | 2h |  |
| 6 | 1.1.2.1 | Identificar una nueva solicitud en la Bandeja de solicitudes |  | 4h | 2017-09-25 A | 2017-09-25 A |  | 100% |  |  |  |  |  |  |  | R1-Sec. 3.3 |
| 7 | 1.1.2.2 | Permitir ordenar los datos de las columnas en la bandeja de solicitudes |  | 2h | 2017-09-25 A | 2017-09-25 A | 6 | 100% |  |  |  |  | R1 | 2h | 2h | R1-Sec. 3.4 |
| 8 | 1.1.2.3 | Habilitar tipo de respuesta que han vencido |  | 14h | 2017-10-09 | 2017-10-10 | 4 |  |  | 0d |  |  | R2 | 14h |  | R1-Sec. 3.7 |
| 9 | 1.1.2.4 | Búsqueda avanzada |  | 16h | 2017-10-11 | 2017-10-12 | 8 |  |  | 0d |  |  | R2 | 16h |  | R1-Sec. 3.11 |
| 10 | 1.1.3 | **Proceso de atención de Solicitudes de información** |  | 42.5d | 2017-09-25 A | 2017-11-24 |  | 10% | 38.16d | 31.25d |  |  |  | 137h | 14h |  |
| 11 | 1.1.3.1 | Nuevo esquema de atención en solicitudes de acceso y protección de datos personales |  | 14h | 2017-09-25 A | 2017-09-27 A | 7 | 100% |  |  |  |  | R1 | 14h | 14h | R1-Sec. 3.2 |
| 12 | 1.1.3.2 | Admitir elegir más de una Tipo de Respuesta |  | 40h | 2017-11-10 | 2017-11-17 | 63 |  |  | 31.25d | 0d |  | R1 | 40h |  | R1-Sec. 3.5 |
| 13 | 1.1.3.3 | Tipo de Respuesta - Reservada |  | 40h | 2017-09-27 | 2017-10-05 | 11 |  |  | 49.75d | 0d |  | R1 | 40h |  | R1-Sec. 3.6 |
| 14 | 1.1.3.4 | Envío de Alertas vía correo a las Unidades Responsables |  | 4h | 2017-10-13 | 2017-10-13 | 9 |  |  | 0d |  |  | R2 | 4h |  | R1-Sec. 3.8 |
| 15 | 1.1.3.5 | Atención a solicitudes expedidas por la DGT |  | 4h | 2017-10-05 | 2017-10-05 | 13 |  |  | 49.75d | 0d |  | R1 | 4h |  | R1-Sec. 3.9 |
| 16 | 1.1.3.6 | Nuevas opciones en la barra de acciones |  | 35h | 2017-11-17 | 2017-11-24 | 12 |  |  | 31.25d | 0d |  | R1 | 35h |  | R1-Sec. 3.10 |
| 17 | 1.1.3.7 | Funcionalidad Principal Programada | milestone | 0h | 2017-11-24 | 2017-11-24 | 16 |  |  | 31.25d | 0d |  | R1 |  |  | HITO |
| 18 | 1.1.4 | **Módulo de Tablero** |  | 4.38d | 2017-10-13 | 2017-10-19 |  |  |  | 0d |  |  |  | 35h |  |  |
| 19 | 1.1.4.1 | Generación de gráficas |  | 35h | 2017-10-13 | 2017-10-19 | 14, 47 |  |  | 0d |  |  | R2 | 35h |  | R1-Sec. 3.12 |
| 20 | 1.1.5 | **Módulo de Reportes** |  | 4.5d | 2017-10-19 | 2017-10-26 |  |  |  | 0d |  |  |  | 36h |  |  |
| 21 | 1.1.5.1 | Solicitudes recibidas en la SFP |  | 6h | 2017-10-19 | 2017-10-20 | 19 |  |  | 0d |  |  | R2 | 6h |  | R1-Sec. 3.13.1 |
| 22 | 1.1.5.2 | Solicitudes en las que la DGT determinó |  | 6h | 2017-10-20 | 2017-10-23 | 21 |  |  | 0d |  |  | R2 | 6h |  | R1-Sec. 3.13.2 |
| 23 | 1.1.5.3 | Solicitudes en las que se determinaron |  | 6h | 2017-10-23 | 2017-10-24 | 22 |  |  | 0d |  |  | R2 | 6h |  | R1-Sec. 3.13.3 |
| 24 | 1.1.5.4 | Resoluciones emitidas por Comité Transparencia |  | 6h | 2017-10-24 | 2017-10-24 | 23 |  |  | 0d |  |  | R2 | 6h |  | R1-Sec. 3.13.4 |
| 25 | 1.1.5.5 | Promedio de días en la atención de solicitudes |  | 6h | 2017-10-24 | 2017-10-25 | 24 |  |  | 0d |  |  | R2 | 6h |  | R1-Sec. 3.13.5 |
| 26 | 1.1.5.6 | Recursos de revisión |  | 6h | 2017-10-25 | 2017-10-26 | 25 |  |  | 0d |  |  | R2 | 6h |  | R1-Sec. 3.13.6 |

| ID | WBS | Task | Duration | Start | Finish | Predecessors | Total slack | Free slack | Resources | Work | Text1 |
| --- | --- | --- | --- | --- | --- | --- | --- | --- | --- | --- | --- |
| 27 | 1.1.6 | **Módulo de Contacto** | 0.25d | 2017-10-26 | 2017-10-26 |  | 0d |  |  | 2h |  |
| 28 | 1.1.6.1 | Actualizar datos de asesoría en la operación | 2h | 2017-10-26 | 2017-10-26 | 26 | 0d |  | R2 | 2h | R1-Sec. 3.14 |
| 29 | 1.2 | **Requerimiento 2** | 74.5d | 2017-10-06 | 2018-01-18 |  | 0d |  |  | 447h |  |
| 30 | 1.2.1 | **Generales** | 0.5d | 2017-10-26 | 2017-10-27 |  | 0d |  |  | 4h |  |
| 31 | 1.2.1.1 | Pantalla principal del SIT (logo) | 4h | 2017-10-26 | 2017-10-27 | 28 | 0d |  | R2 | 4h | R2-Sec. 3.1 |
| 32 | 1.2.2 | **Módulo de Información** | 0.62d | 2017-10-27 | 2017-10-27 |  | 0d |  |  | 5h |  |
| 33 | 1.2.2.1 | Actualizar plazos para atender solicitudes | 3h | 2017-10-27 | 2017-10-27 | 31 | 0d |  | R2 | 3h | R2-Sec. 3.2.1 |
| 34 | 1.2.2.2 | Vinculo que hace referencia a documentos de apoyo | 1h | 2017-10-27 | 2017-10-27 | 33 | 0d |  | R2 | 1h | R2-Sec. 3.2.2 |
| 35 | 1.2.2.3 | Considerar como tipo de respuesta la Prórroga (etiqueta) | 1h | 2017-10-27 | 2017-10-27 | 34 | 0d |  | R2 | 1h | R2-Sec. 3.2.3 |
| 36 | 1.2.3 | **Módulo de Catálogos** | 2d | 2017-10-27 | 2017-10-31 |  | 0d |  |  | 16h |  |
| 37 | 1.2.3.1 | Mantenimiento al catálogo de documentos de apoyo | 8h | 2017-10-27 | 2017-10-30 | 35 | 0d |  | R2 | 8h | R2-Sec. 3.3.1 |
| 38 | 1.2.3.2 | Mantenimiento a los costos de reproducción | 8h | 2017-10-30 | 2017-10-31 | 37 | 0d |  | R2 | 8h | R2-Sec. 3.3.2 |
| 39 | 1.2.4 | **Proceso de atención de Solicitudes de información** | 74.5d | 2017-10-06 | 2018-01-18 |  | 0d |  |  | 215h |  |
| 40 | 1.2.4.1 | Tipo de Respuesta - Requerimiento de Información adicional | 4h | 2017-10-06 | 2017-10-06 | 15 | 49.75d | 0d | R1 | 4h | R2-Sec. 3.4.1 |
| 41 | 1.2.4.2 | Tipo de Respuesta - Reservada | 45h | 2017-10-06 | 2017-10-16 | 40 | 49.75d | 0d | R1 | 45h | R2-Sec. 3.4.2 |
| 42 | 1.2.4.3 | Tipo de Respuesta - Inexistencia | 16h | 2017-10-16 | 2017-10-18 | 41 | 49.75d | 0d | R1 | 16h | R2-Sec. 3.4.3 |
| 43 | 1.2.4.4 | Tipo de Respuesta - Información Confidencial | 30h | 2017-10-18 | 2017-10-23 | 42 | 49.75d | 0d | R1 | 30h | R2-Sec. 3.4.4 |
| 44 | 1.2.4.5 | Incluir proceso de Prórroga | 30h | 2017-10-23 | 2017-10-27 | 43 | 49.75d | 0d | R1 | 30h | R2-Sec. 3.4.5 |
| 45 | 1.2.4.6 | Considerar para el PRUT solo la incompetencia Total | 8h | 2017-10-27 | 2017-10-30 | 44 | 49.75d | 0d | R1 | 8h | R2-Sec. 3.4.6 |
| 46 | 1.2.4.7 | Las observaciones del CT son turnadas al PRUT | 8h | 2017-10-30 | 2017-10-31 | 45 | 49.75d | 0d | R1 | 8h | R2-Sec. 3.4.7 |
| 47 | 1.2.4.8 | Envío de alertas vía correo de las Unidades Administrativas | 4h | 2017-10-13 | 2017-10-13 | 9 | 0d |  | R2 | 4h | R2-Sec. 3.4.15 |
| 48 | 1.2.4.9 | Chat para consultas o dudas rápidas | 70h | 2018-01-05 | 2018-01-18 | 90 | 0d |  | R2 | 70h | R2-Sec. 3.4.16 |
| 49 | 1.2.5 | **Módulo de Solicitudes** | 7.12d | 2017-10-31 | 2017-11-09 |  | 0.12d |  |  | 73h |  |
| 50 | 1.2.5.1 | Orden de la unidad administrativa al turnar y returnar | 1h | 2017-10-31 | 2017-10-31 | 46 | 49.75d | 0d | R1 | 1h | R2-Sec. 3.4.8 |
| 51 | 1.2.5.2 | Seguimiento - ¿Como returnar una solicitud? | 8h | 2017-10-31 | 2017-11-01 | 50 | 49.75d | 0d | R1 | 8h | R2-Sec. 3.4.10 |
| 52 | 1.2.5.3 | Seguimiento - Adjuntar archivos al turnar o returnar | 4h | 2017-11-01 | 2017-11-02 | 51 | 49.75d | 0d | R1 | 4h | R2-Sec. 3.4.11 |
| 53 | 1.2.5.4 | Flujo de la soliciutd - ¿Cómo las UA pueden consultar la respuesta emitida? | 8h | 2017-11-02 | 2017-11-03 | 52 | 49.75d | 0d | R1 | 8h | R2-Sec. 3.4.12 |
| 54 | 1.2.5.5 | Flujo de la soliciutd - ¿Cómo la UT puede atender una solicitud? | 36h | 2017-11-03 | 2017-11-09 | 53 | 49.75d |  | R1 | 36h | R2-Sec. 3.4.13 |
| 55 | 1.2.5.6 | Busqueda avanzada - incluir más opciones para buscar | 16h | 2017-10-31 | 2017-11-02 | 38 | 0d |  | R2 | 16h | R2-Sec. 3.4.14 |

| ID | WBS | Task | Duration | Start | Finish | Predecessors | Total slack | Free slack | Resources | Work | Text1 |
| --- | --- | --- | --- | --- | --- | --- | --- | --- | --- | --- | --- |
| 56 | 1.2.6 | **Proceso de reproducción de información** | 6.12d | 2017-11-02 | 2017-11-10 |  | 31.25d |  |  | 49h |  |
| 57 | 1.2.6.1 | El PRUT inicia con la solicitud, la anliza y determina atenderla o la turna | 7h | 2017-11-02 | 2017-11-03 | 55 | 31.25d | 0d | R1 | 7h | R2-Sec. 3.4.9 |
| 58 | 1.2.6.2 | La unidad administartiva ateinde la solicitud | 7h | 2017-11-03 | 2017-11-06 | 57 | 31.25d | 0d | R1 | 7h | R2-Sec. 3.4.9 |
| 59 | 1.2.6.3 | El PRUT analiza la solicitud y determina | 7h | 2017-11-06 | 2017-11-07 | 58 | 31.25d | 0d | R1 | 7h | R2-Sec. 3.4.9 |
| 60 | 1.2.6.4 | El comité analiza la solicitud y determina | 7h | 2017-11-07 | 2017-11-08 | 59 | 31.25d | 0d | R1 | 7h | R2-Sec. 3.4.9 |
| 61 | 1.2.6.5 | Reproduccion de la información | 7h | 2017-11-08 | 2017-11-09 | 60 | 31.25d | 0d | R1 | 7h | R2-Sec. 3.4.9 |
| 62 | 1.2.6.6 | El PRUT analiza la solicitud pagada y determina | 7h | 2017-11-09 | 2017-11-09 | 61 | 31.25d | 0d | R1 | 7h | R2-Sec. 3.4.9 |
| 63 | 1.2.6.7 | El PRUT notifica de entrea o envio de información | 7h | 2017-11-10 | 2017-11-10 | 62 | 31.25d | 0d | R1 | 7h | R2-Sec. 3.4.9 |
| 64 | 1.2.7 | **Recurso de Revisión** | 10.62d | 2017-11-02 | 2017-11-17 |  | 0d |  |  | 85h |  |
| 65 | 1.2.7.1 | Relacionar el recurso de revisión con la solicitud original | 24h | 2017-11-02 | 2017-11-07 | 55 | 0d |  | R2 | 24h | R2-Sec. 3.5.1 |
| 66 | 1.2.7.2 | Solicitud de Requerimiento de Información Adicional - (RIA) | 45h | 2017-11-07 | 2017-11-15 | 65 | 0d |  | R2 | 45h | R2-Sec. 3.5.2 |
| 67 | 1.2.7.3 | Acumulado de solicitudes en un solo recurso de revisión | 16h | 2017-11-15 | 2017-11-17 | 66 | 0d |  | R2 | 16h | R2-Sec. 3.5.3 |
| 68 | 1.3 | **Requerimiento 3** | 35.38d | 2017-11-17 | 2018-01-05 |  | 0d |  |  | 347h |  |
| 69 | 1.3.1 | **Módulo de información** | 0.25d | 2017-11-17 | 2017-11-17 |  | 0d |  |  | 2h |  |
| 70 | 1.3.1.1 | Actualizar plazos en días hábiles para atender las solicitudes | 2h | 2017-11-17 | 2017-11-17 | 67 | 0d |  | R2 | 2h | R3-Sec. 3.1 |
| 71 | 1.3.2 | **Solicitudes de Datos Personales** | 8d | 2017-11-24 | 2017-12-06 |  | 31.25d |  |  | 64h |  |
| 72 | 1.3.2.1 | Identificar solicitudes de acceso, rectificación, cancelación y oposición | 8h | 2017-11-24 | 2017-11-27 | 17 | 31.25d | 0d | R1 | 8h | R3-Sec. 3.2 |
| 73 | 1.3.2.2 | Tipos de respuesta de la Unidad Administrativa en derechos ARCO | 16h | 2017-11-27 | 2017-11-29 | 72 | 31.25d | 0d | R1 | 16h | R3-Sec. 3.3.1 |
| 74 | 1.3.2.3 | Tipos de respuesta UT o PRUT inicio soliciutd en derechos ARCO | 16h | 2017-11-29 | 2017-12-01 | 73 | 31.25d | 0d | R1 | 16h | R3-Sec. 3.3.2 |
| 75 | 1.3.2.4 | Tipos de respuesta de la UT o PRUT cuando analiza la solicitud en derechos ARCO | 16h | 2017-12-01 | 2017-12-05 | 74 | 31.25d | 0d | R1 | 16h | R3-Sec. 3.3.3 |
| 76 | 1.3.2.5 | Procedimiento específico para solicitar el ejercicio de los derechos ARCO | 8h | 2017-12-05 | 2017-12-06 | 75 | 31.25d |  | R1 | 8h | R3-Sec. 3.4.1 |
| 77 | 1.3.3 | **Recurso de Revisión** | 30.75d | 2017-11-24 | 2018-01-05 |  | 0d |  |  | 246h |  |
| 78 | 1.3.3.1 | Relacionar el recuros de revisión (RR) con la solicitud original | 24h | 2017-11-24 | 2017-11-28 | 92 | 0d |  | R2 | 24h | R3-Sec. 3.5.1 |
| 79 | 1.3.3.2 | Registrar el Recurso de Revisión | 16h | 2017-11-29 | 2017-11-30 | 78 | 0d |  | R2 | 16h | R3-Sec. 3.5.2 |
| 80 | 1.3.3.3 | Proyecto de alegatos | 24h | 2017-12-01 | 2017-12-05 | 79 | 0d |  | R2 | 24h | R3-Sec. 3.5.3 |
| 81 | 1.3.3.4 | El PRUT turna a las Uas para proyecto de alegatos | 16h | 2017-12-06 | 2017-12-07 | 80 | 0d |  | R2 | 16h | R3-Sec. 3.5.4 |
| 82 | 1.3.3.5 | La UA atiende el recurso de revisión | 8h | 2017-12-08 | 2017-12-08 | 81 | 0d |  | R2 | 8h | R3-Sec. 3.5.5 |
| 83 | 1.3.3.6 | El CT valida argumentos para etapas del recurso de revisión | 16h | 2017-12-11 | 2017-12-12 | 82 | 0d |  | R2 | 16h | R3-Sec. 3.5.6 |
| 84 | 1.3.3.7 | El CT solicita un requerimiento | 16h | 2017-12-13 | 2017-12-14 | 83 | 0d |  | R2 | 16h | R3-Sec. 3.5.7 |
| 85 | 1.3.3.8 | La UA aporta argumentos para el requerimiento | 16h | 2017-12-15 | 2017-12-18 | 84 | 0d |  | R2 | 16h | R3-Sec. 3.5.8 |
| 86 | 1.3.3.9 | EL PRUT integra y elabora proyectos de alegatos | 24h | 2017-12-19 | 2017-12-21 | 85 | 0d |  | R2 | 24h | R3-Sec. 3.5.9 |
| 87 | 1.3.3.10 | Solicitud de cita a audiencia | 16h | 2017-12-22 | 2017-12-25 | 86 | 0d |  | R2 | 16h | R3-Sec. 3.6.1 |
| 88 | 1.3.3.11 | La UA notifica la cita de audiencia | 16h | 2017-12-26 | 2017-12-27 | 87 | 0d |  | R2 | 16h | R3-Sec. 3.6.2 |
| 89 | 1.3.3.12 | Requerimento de información adicional | 24h | 2017-12-28 | 2018-01-01 | 88 | 0d |  | R2 | 24h | R3-Sec. 3.6.3 |
| 90 | 1.3.3.13 | Entorno de elementos para detemirnar la respuesta final en el proceso de RR | 30h | 2018-01-02 | 2018-01-05 | 89 | 0d |  | R2 | 30h | R3-Sec. 3.7 |

| ID | WBS | Task | Duration | Start | Finish | Predecessors | Total slack | Resources | Work | Text1 |
| --- | --- | --- | --- | --- | --- | --- | --- | --- | --- | --- |
| 91 | 1.3.4 | **Módulo de Tablero** | 4.38d | 2017-11-17 | 2017-11-23 |  | 0d |  | 35h |  |
| 92 | 1.3.4.1 | Generación de gráficas | 35h | 2017-11-17 | 2017-11-23 | 70 | 0d | R2 | 35h | R3-Sec. 3.8 |
